# 网关控制台

Schedule from MS Project, 2016-10-10 to 2017-02-08.

## Calendars

- 标准: Mon-Fri 08:00-12:00, 13:00-17:00; Sat-Sun off.

## Resources

| Resource |
| --- |
| 罗元汉 |
| 刘立志 |
| 郑自礼 |
| 段焱 |
| 邱宇 |
| 王小平 |
| 罗俊美 |
| 全体成员 |
| 刘源 |
| 小黄杰 |
| 钟劲松 |

## Schedule

| ID | WBS | Task | Type | Duration | Start | Finish | Predecessors | Baseline start | Baseline finish | Baseline duration | Total slack | Free slack | Constraint | Resources | Work | Baseline cost |
| --- | --- | --- | --- | --- | --- | --- | --- | --- | --- | --- | --- | --- | --- | --- | --- | --- |
| 1 | 1 | **采集服务开发计划** |  | 45d | 2016-12-08 08:00 | 2017-02-08 17:00 |  | 2011-02-10 08:00 | 2011-07-19 09:00 | 113.12d? |  |  |  | 郑自礼 | 876h | 166,960 |
| 2 | 1.1 | **立项阶段** |  | 3d | 2016-12-08 08:00 | 2016-12-12 17:00 |  | 2012-10-12 08:00 | 2011-02-11 12:00 | 1.5d |  |  |  |  |  | 960 |
| 3 | 1.1.1 | 立项申请 |  | 3d | 2016-10-10 08:00 | 2016-10-12 17:00 |  | 2012-10-12 08:00 | 2012-10-12 08:00 | 1d | 40d | 0d | start no earlier than 2016-10-10 08:00 |  |  | 320 |
| 4 | 1.1.2 | 立项公告 | milestone | 0h | 2016-10-12 17:00 | 2016-10-12 17:00 | 3 | 2012-10-12 08:00 | 2012-10-12 08:00 | 2h | 40d |  | finish no earlier than 2012-10-12 08:00 |  |  | 80 |
| 5 | 1.1.3 | 项目启动会 | milestone | 0h | 2016-12-08 08:00 | 2016-12-08 08:00 | 4 | 2012-10-12 08:00 | 2012-10-12 08:00 | 2h | 0d |  |  |  |  | 560 |
| 6 | 1.2 | **需求阶段** |  | 0.12d | 2016-12-08 08:00 | 2016-12-08 09:00 |  | 2012-10-12 08:00 | 2012-10-12 08:00 | 16.25d | 0d |  |  |  |  | 8,960 |
| 7 | 1.2.1 | 需求收集 |  | 1h | 2016-12-08 08:00 | 2016-12-08 09:00 | 5 | 2012-10-12 08:00 | 2012-10-12 08:00 | 5d | 0d |  | finish no earlier than 2016-09-01 17:00 |  |  | 3,200 |
| 8 | 1.2.2 | 需求分析 | milestone | 0h | 2016-12-08 09:00 | 2016-12-08 09:00 | 7 | 2012-10-12 08:00 | 2012-10-12 08:00 | 5d | 0d |  | finish no earlier than 2012-10-12 08:00 |  |  | 3,200 |
| 9 | 1.2.3 | 需求规格说明书编写 | milestone | 0h | 2016-12-08 09:00 | 2016-12-08 09:00 | 8 | 2012-10-12 08:00 | 2012-10-12 08:00 | 5d | 0d |  | finish no earlier than 2016-09-02 17:00 |  |  | 1,600 |
| 10 | 1.2.4 | 建立需求跟踪矩阵 | milestone | 0h | 2016-12-08 09:00 | 2016-12-08 09:00 | 9 | 2012-10-12 08:00 | 2012-10-12 08:00 | 1d | 0d |  | finish no earlier than 2016-09-05 17:00 |  |  | 320 |
| 11 | 1.2.5 | 需求评审 | milestone | 0h | 2016-12-08 09:00 | 2016-12-08 09:00 | 10 | 2012-10-12 08:00 | 2012-10-12 08:00 | 2h | 0d |  | finish no earlier than 2016-09-06 17:00 |  |  | 640 |
| 12 | 1.3 | **策划阶段** |  | 0d | 2016-12-08 09:00 | 2016-12-08 09:00 |  | 2012-10-12 08:00 | 2012-10-12 08:00 | 6.25d | 0d |  |  |  |  | 3,120 |
| 13 | 1.3.1 | 项目过程定义 | milestone | 0h | 2016-12-08 09:00 | 2016-12-08 09:00 | 11 | 2012-10-12 08:00 | 2012-10-12 08:00 | 1d | 0d |  | finish no earlier than 2016-09-07 17:00 |  |  | 320 |
| 14 | 1.3.2 | 软件估算 | milestone | 0h | 2016-12-08 09:00 | 2016-12-08 09:00 | 13 | 2012-10-12 08:00 | 2012-10-12 08:00 | 1d | 0d |  |  |  |  | 320 |
| 15 | 1.3.3 | 编制项目开发计划 | milestone | 0h | 2016-12-08 09:00 | 2016-12-08 09:00 | 14 | 2012-10-12 08:00 | 2012-10-12 08:00 | 1d | 0d |  | finish no earlier than 2016-09-08 17:00 |  |  | 320 |
| 16 | 1.3.4 | **编制辅助计划** |  | 0d | 2016-12-08 09:00 | 2016-12-08 09:00 |  | 2012-10-12 08:00 | 2012-10-12 08:00 | 2d | 0d |  |  |  |  | 1,280 |
| 17 | 1.3.4.1 | 质量保证计划编制 | milestone | 0h | 2016-12-08 09:00 | 2016-12-08 09:00 | 15 | 2012-10-12 08:00 | 2012-10-12 08:00 | 1d | 0d |  | finish no earlier than 2016-09-09 17:00 |  |  | 320 |
| 18 | 1.3.4.2 | 配置管理计划编制 | milestone | 0h | 2016-12-08 09:00 | 2016-12-08 09:00 | 15 | 2012-10-12 08:00 | 2012-10-12 08:00 | 1d | 0d |  | finish no earlier than 2016-09-12 17:00 |  |  | 320 |
| 19 | 1.3.4.3 | 评审计划编制 | milestone | 0h | 2016-12-08 09:00 | 2016-12-08 09:00 | 15 | 2012-10-12 08:00 | 2012-10-12 08:00 | 1d | 0d |  |  |  |  | 320 |
| 20 | 1.3.4.4 | 测量计划编制 | milestone | 0h | 2016-12-08 09:00 | 2016-12-08 09:00 | 19 | 2012-10-12 08:00 | 2012-10-12 08:00 | 2h | 0d |  |  |  |  | 80 |
| 21 | 1.3.4.5 | 风险管理计划编制 | milestone | 0h | 2016-12-08 09:00 | 2016-12-08 09:00 | 20 | 2012-10-12 08:00 | 2012-10-12 08:00 | 2h | 0d |  |  |  |  | 80 |
| 22 | 1.3.4.6 | 项目沟通计划编制 | milestone | 0h | 2016-12-08 09:00 | 2016-12-08 09:00 | 21 | 2012-10-12 08:00 | 2012-10-12 08:00 | 2h | 0d |  |  |  |  | 80 |
| 23 | 1.3.4.7 | 项目知识技能及培训计划编制 | milestone | 0h | 2016-12-08 09:00 | 2016-12-08 09:00 | 22 | 2012-10-12 08:00 | 2011-03-14 15:00 | 2h | 0d |  |  |  |  | 80 |
| 24 | 1.3.5 | 项目计划评审 | milestone | 0h | 2016-12-08 09:00 | 2016-12-08 09:00 | 23 | 2012-10-12 08:00 | 2012-10-12 08:00 | 2h | 0d |  | finish no earlier than 2016-09-15 17:00 |  |  | 560 |
| 25 | 1.3.6 | 收集度量数据及编写阶段报告 | milestone | 0h | 2016-12-08 09:00 | 2016-12-08 09:00 | 24 | 2012-10-12 08:00 | 2012-10-12 08:00 | 1d | 0d |  | finish no earlier than 2016-09-16 17:00 |  |  | 320 |

Notes:
- 24: 项目计划及与之相关的辅助计划

| ID | WBS | Task | Type | Duration | Start | Finish | Predecessors | Total slack | Free slack | Constraint | Resources | Work |
| --- | --- | --- | --- | --- | --- | --- | --- | --- | --- | --- | --- | --- |
| 26 | 1.4 | **软件设计阶段** |  | 30d | 2016-12-08 08:00 | 2017-01-18 17:00 |  |  |  |  |  |  |
| 27 | 1.4.1 | **概要设计** |  | 6d | 2016-12-08 08:00 | 2016-12-15 17:00 |  | 0d |  |  |  |  |
| 28 | 1.4.1.1 | **信息管理** |  | 6d | 2016-12-08 08:00 | 2016-12-15 17:00 |  | 0d |  |  |  |  |
| 29 | 1.4.1.1.1 | **采集服务管理** |  | 6d | 2016-12-08 08:00 | 2016-12-15 17:00 |  | 0d |  |  |  |  |
| 30 | 1.4.1.1.1.1 | 决策分析和报告 |  | 16h | 2016-12-08 08:00 | 2016-12-09 17:00 |  | 0d |  | finish no earlier than 2016-08-30 17:00 |  |  |
| 31 | 1.4.1.1.1.2 | 概要设计 |  | 2d | 2016-12-12 08:00 | 2016-12-13 17:00 | 30 | 0d |  |  |  |  |
| 32 | 1.4.1.1.1.3 | 数据库设计 |  | 2d | 2016-12-14 08:00 | 2016-12-15 17:00 | 31 | 0d |  |  |  |  |
| 33 | 1.4.1.1.1.4 | 概要设计评审 |  | 0.5d | 2016-12-08 08:00 | 2016-12-08 12:00 |  | 0d |  | start no earlier than 2016-09-07 08:00 |  |  |
| 34 | 1.4.1.1.1.5 | 需求跟踪矩阵更新 |  | 2h | 2016-12-08 08:00 | 2016-12-08 10:00 |  | 0d |  | start no earlier than 2016-09-08 08:00 |  |  |
| 35 | 1.4.2 | **详细设计** |  | 7d? | 2016-12-08 08:00 | 2016-12-16 17:00 |  | -23d | 0d |  |  |  |
| 36 | 1.4.2.1 | **信息管理** |  | 7d? | 2016-12-08 08:00 | 2016-12-16 17:00 |  | -23d | 0d |  |  |  |
| 37 | 1.4.2.1.1 | **采集服务管理** |  | 7d? | 2016-12-08 08:00 | 2016-12-16 17:00 |  | -23d | 0d |  |  |  |
| 38 | 1.4.2.1.1.1 | 标准化管理详细设计 |  | 3d | 2016-12-08 08:00 | 2016-12-12 17:00 |  | -23d | 0d | start no earlier than 2012-10-23 13:00 |  |  |
| 39 | 1.4.2.1.1.2 | 接口设计 |  | 1d? | 2016-12-13 08:00 | 2016-12-13 17:00 | 38 | -23d | 0d | start no earlier than 2012-10-31 08:00 |  |  |
| 40 | 1.4.2.1.1.3 | 详细设计说明书评审 |  | 1d | 2016-12-14 08:00 | 2016-12-14 17:00 | 39 | -23d | 0d | start no earlier than 2012-11-01 08:00 |  |  |
| 41 | 1.4.2.1.1.4 | 需求跟踪矩阵更新 |  | 1d | 2016-12-15 08:00 | 2016-12-15 17:00 | 40 | 0d |  | start no earlier than 2012-11-01 08:00 |  |  |
| 42 | 1.4.2.1.1.5 | 收集度量数据及编写阶段报告 |  | 1d | 2016-12-16 08:00 | 2016-12-16 17:00 | 41 | 0d |  | start no earlier than 2012-11-01 08:00 |  |  |
| 43 | 1.4.3 | 设计阶段里程碑评审 | milestone | 0d | 2016-12-16 17:00 | 2016-12-16 17:00 | 42 | 0d |  | finish no earlier than 2012-11-01 08:00 |  |  |
| 44 | 1.5 | **软件编码阶段** |  | 13d | 2016-11-14 08:00 | 2016-11-30 17:00 |  |  |  |  |  | 444h |
| 45 | 1.5.1 | **信息管理** |  | 13d | 2016-11-14 08:00 | 2016-11-30 17:00 |  |  |  |  |  | 444h |
| 46 | 1.5.1.1 | **采集服务管理** |  | 13d | 2016-11-14 08:00 | 2016-11-30 17:00 |  |  |  |  |  | 436h |
| 47 | 1.5.1.1.1 | **kettle开发框架搭建(熟悉kettle)** |  | 2d | 2016-11-14 08:00 | 2016-11-15 17:00 |  |  |  |  |  | 24h |
| 48 | 1.5.1.1.1.1 | 集成到java ide环境 | manual | 1d | 2016-11-14 08:00 | 2016-11-14 17:00 | 40 |  |  | start no earlier than 2016-11-14 08:00 | 邱宇 | 8h |
| 49 | 1.5.1.1.1.2 | 集成测试用例 | manual | 1d | 2016-11-15 08:00 | 2016-11-15 17:00 | 48 |  |  | start no earlier than 2016-11-15 08:00 | 邱宇 | 8h |
| 50 | 1.5.1.1.1.3 | 熟悉kettle(环境搭建和学习) | manual | 1d | 2016-11-14 08:00 | 2016-11-14 17:00 | 49 |  |  | start no earlier than 2016-11-14 08:00 | 全体成员 | 8h |

| ID | WBS | Task | Type | Duration | Start | Finish | Predecessors | Total slack | Free slack | Constraint | Resources | Work |
| --- | --- | --- | --- | --- | --- | --- | --- | --- | --- | --- | --- | --- |
| 51 | 1.5.1.1.2 | **业务库数据库表构建(需要提供有表结构说明)** |  | 3d | 2016-11-14 08:00 | 2016-11-16 17:00 |  |  |  |  | 钟劲松 | 96h |
| 52 | 1.5.1.1.2.1 | 表结构分析 | manual | 1d | 2016-11-15 08:00 | 2016-11-15 17:00 | 40 |  |  | start no earlier than 2016-11-15 08:00 | 钟劲松; 邱宇; 郑自礼 | 24h |
| 53 | 1.5.1.1.2.2 | 需求定义 | manual | 2d | 2016-11-16 08:00 | 2016-11-17 17:00 | 52 |  |  | start no earlier than 2016-11-16 08:00 | 邱宇; 郑自礼; 钟劲松 | 48h |
| 54 | 1.5.1.1.3 | **主题库分析** |  | 6d | 2016-11-17 08:00 | 2016-11-24 17:00 |  |  |  |  |  | 156h |
| 55 | 1.5.1.1.3.1 | 业务运营(主题) | manual | 0.5d | 2016-11-17 08:00 | 2016-11-17 12:00 | 40 |  |  | start no earlier than 2016-11-17 08:00 | 段焱; 邱宇; 郑自礼 | 12h |
| 56 | 1.5.1.1.3.2 | （一）挂号表 | manual | 0.5d | 2016-11-17 08:00 | 2016-11-17 12:00 | 40, 55 |  |  | start no earlier than 2016-11-17 08:00 | 段焱; 邱宇; 郑自礼 | 12h |
| 57 | 1.5.1.1.3.3 | （二）诊疗收费表 | manual | 0.5d | 2016-11-18 08:00 | 2016-11-18 12:00 | 40, 56 |  |  | start no earlier than 2016-11-18 08:00 | 段焱; 邱宇; 郑自礼 | 12h |
| 58 | 1.5.1.1.3.4 | （三）入院登记表 | manual | 0.5d | 2016-11-18 08:00 | 2016-11-18 12:00 | 40, 57 |  |  | start no earlier than 2016-11-18 08:00 | 段焱; 邱宇; 郑自礼 | 12h |
| 59 | 1.5.1.1.3.5 | （四）出院登记表 | manual | 0.5d | 2016-11-21 08:00 | 2016-11-21 12:00 | 40, 58 |  |  | start no earlier than 2016-11-21 08:00 | 段焱; 邱宇; 郑自礼 | 12h |
| 60 | 1.5.1.1.3.6 | （五）在/出院结算表 | manual | 0.5d | 2016-11-21 08:00 | 2016-11-21 12:00 | 40, 59 |  |  | start no earlier than 2016-11-21 08:00 | 段焱; 邱宇; 郑自礼 | 12h |
| 61 | 1.5.1.1.3.7 | （六）手术记录表 | manual | 0.5d | 2016-11-21 08:00 | 2016-11-21 12:00 | 40, 60 |  |  | start no earlier than 2016-11-21 08:00 | 段焱; 邱宇; 郑自礼 | 12h |
| 62 | 1.5.1.1.3.8 | （七）业务量、收入统计表 | manual | 0.5d | 2016-11-21 08:00 | 2016-11-21 12:00 | 61, 60, 59, 58, 57, 56 |  |  | start no earlier than 2016-11-21 08:00 | 段焱; 邱宇 | 8h |
| 63 | 1.5.1.1.3.9 | JOB和转换 | manual | 4d | 2016-11-21 08:00 | 2016-11-24 17:00 | 60, 59, 58, 57, 56, 62 |  |  | start no earlier than 2016-11-21 08:00 | 段焱; 邱宇 | 64h |
| 64 | 1.5.1.1.4 | **调度任务管理** |  | 7d | 2016-11-16 08:00 | 2016-11-24 17:00 |  |  |  |  |  | 56h |
| 65 | 1.5.1.1.4.1 | 调度任务数据持久化实现 | manual | 4d | 2016-11-16 08:00 | 2016-11-21 17:00 | 40 |  |  | start no earlier than 2016-11-16 08:00 | 刘源 | 32h |
| 66 | 1.5.1.1.4.2 | 调度任务管理服务 | manual | 1d | 2016-11-22 08:00 | 2016-11-22 17:00 | 65 |  |  | start no earlier than 2016-11-22 08:00 | 刘源 | 8h |
| 67 | 1.5.1.1.4.3 | 调度任务和kettle联调 | manual | 2d | 2016-11-23 08:00 | 2016-11-24 17:00 | 66 |  |  | start no earlier than 2016-11-23 08:00 | 刘源 | 16h |
| 68 | 1.5.1.1.5 | **采集日志管理** |  | 3d | 2016-11-25 08:00 | 2016-11-29 17:00 |  |  |  |  |  | 24h |
| 69 | 1.5.1.1.5.1 | 采集日志与数据持久化实现 |  | 1d | 2016-11-25 08:00 | 2016-11-25 17:00 | 66, 49 | -4d | 0d | start no earlier than 2016-11-25 08:00 | 刘源 | 8h |
| 70 | 1.5.1.1.5.2 | 采集日志服务 |  | 2d | 2016-11-28 08:00 | 2016-11-29 17:00 | 69 | -4d | 0d |  | 刘源 | 16h |
| 71 | 1.5.1.1.6 | **KETTLE二次开发** |  | 5d | 2016-11-24 08:00 | 2016-11-30 17:00 |  |  |  |  |  | 80h |
| 72 | 1.5.1.1.6.1 | 工具定制化开发 | manual | 2d | 2016-11-24 08:00 | 2016-11-25 17:00 | 70 |  |  |  | 段焱; 邱宇 | 32h |
| 73 | 1.5.1.1.6.2 | 汉化开发 | manual | 1d | 2016-11-28 08:00 | 2016-11-28 17:00 | 72 |  |  |  | 段焱; 邱宇 | 16h |
| 74 | 1.5.1.1.6.3 | 集群服务 | manual | 2d | 2016-11-29 08:00 | 2016-11-30 17:00 | 73 |  |  |  | 段焱; 邱宇 | 32h |
| 75 | 1.5.1.2 | 编码里程碑评审 |  | 1d | 2016-12-01 08:00 | 2016-12-01 17:00 |  | -0.5d | 0d | finish no earlier than 2016-12-01 17:00 | 全体成员 | 8h |

| ID | WBS | Task | Duration | Start | Finish | Predecessors | Total slack | Free slack | Constraint | Resources | Work |
| --- | --- | --- | --- | --- | --- | --- | --- | --- | --- | --- | --- |
| 76 | 1.6 | **测试阶段** | 13.5d | 2016-12-01 08:00 | 2016-12-20 12:00 |  |  |  |  |  | 48h |
| 77 | 1.6.1 | **采集服务管理** | 13.5d | 2016-12-02 08:00 | 2016-12-21 12:00 |  | -0.5d | 0d |  |  | 48h |
| 78 | 1.6.1.1 | 产品集成 | 0.5d | 2016-12-02 08:00 | 2016-12-02 12:00 | 75 | 0d |  | start no earlier than 2012-12-06 13:00 | 邱宇; 郑自礼 | 8h |
| 79 | 1.6.1.2 | 集成测试 | 2d | 2016-12-02 13:00 | 2016-12-06 12:00 | 78 | 0d |  | start no earlier than 2012-12-07 13:00 | 全体成员 | 16h |
| 80 | 1.6.1.3 | 系统测试计划编写 | 1d | 2016-12-02 08:00 | 2016-12-02 17:00 | 75 | -0.5d | 0d | start no earlier than 2012-12-06 13:00 | 罗俊美 | 8h |
| 81 | 1.6.1.4 | 测试用例编写 | 2d | 2016-12-05 08:00 | 2016-12-06 17:00 | 80 | -0.5d | 0d | start no earlier than 2012-12-06 13:00 | 罗俊美 | 16h |
| 82 | 1.6.1.5 | 系统测试 | 10d | 2016-12-07 08:00 | 2016-12-20 17:00 | 81 | -0.5d | 0d | start no earlier than 2012-12-13 13:00 |  |  |
| 83 | 1.6.1.6 | 需求跟踪矩阵更新 | 0.5d | 2016-12-02 08:00 | 2016-12-02 12:00 | 75 | 2.5d | 0d | start no earlier than 2012-12-28 08:00 |  |  |
| 84 | 1.6.1.7 | 收集度量数据及编写阶段报告 | 0.5d | 2016-12-02 08:00 | 2016-12-02 12:00 | 75 | 0d |  | start no earlier than 2012-12-28 08:00 |  |  |
| 85 | 1.6.1.8 | 用户手册编写 | 0.5d | 2016-12-02 08:00 | 2016-12-02 12:00 | 75 | 0d |  | start no earlier than 2012-12-28 08:00 |  |  |
| 86 | 1.6.1.9 | 系统安装手册编写 | 0.5d | 2016-12-02 08:00 | 2016-12-02 12:00 | 75 | 0d |  | start no earlier than 2012-12-28 08:00 |  |  |
| 87 | 1.6.1.10 | 测试里程碑评审 | 0.5d | 2016-12-21 08:00 | 2016-12-21 12:00 | 82 | -0.5d | 0d | start no earlier than 2012-12-28 08:00 |  |  |
| 88 | 1.6.1.11 | 产品发布 | 1d | 2016-12-02 13:00 | 2016-12-05 12:00 | 83 | 2.5d |  | finish no earlier than 2012-12-28 08:00 |  |  |
| 89 | 1.7 | **产品集成阶段** | 2d | 2016-12-01 08:00 | 2016-12-02 17:00 |  |  |  |  |  | 24h |
| 90 | 1.7.1 | 主数据集成联调 | 1d | 2016-12-01 08:00 | 2016-12-01 17:00 |  | 0d |  |  | 邱宇; 郑自礼 | 16h |
| 91 | 1.7.2 | 各服务组件、采集上传工具集成 | 0.5d | 2016-12-02 08:00 | 2016-12-02 12:00 | 90 | 0d |  |  | 郑自礼; 邱宇 | 8h |
| 92 | 1.8 | **收尾阶段** | 1d | 2016-12-08 08:00 | 2016-12-08 17:00 |  | 0d |  |  |  |  |
| 93 | 1.8.1 | **信息管理** | 1d | 2016-12-08 08:00 | 2016-12-08 17:00 |  | 0d |  |  |  |  |
| 94 | 1.8.1.1 | 结项总结报告编写 | 1d | 2016-12-08 08:00 | 2016-12-08 17:00 | 88 | 0d |  | start no earlier than 2012-12-31 08:00 |  |  |
| 95 | 1.9 | **项目监督与控制** | 0.12d | 2016-12-08 08:00 | 2016-12-08 09:00 |  | 0d |  |  |  |  |
| 96 | 1.9.1 | **项目周例会** | 0.12d | 2016-12-08 08:00 | 2016-12-08 09:00 |  | 0d |  |  |  |  |
| 97 | 1.9.1.1 | 项目周例会 1 | 1h | 2016-12-08 08:00 | 2016-12-08 09:00 |  | 0d |  | start no earlier than 2012-10-19 08:00 |  |  |
| 98 | 1.9.1.2 | 项目周例会 2 | 1h | 2016-12-08 08:00 | 2016-12-08 09:00 |  | 0d |  | start no earlier than 2012-10-26 08:00 |  |  |
| 99 | 1.9.1.3 | 项目周例会 3 | 1h | 2016-12-08 08:00 | 2016-12-08 09:00 |  | 0d |  | start no earlier than 2012-11-02 08:00 |  |  |
| 100 | 1.9.1.4 | 项目周例会 4 | 1h | 2016-12-08 08:00 | 2016-12-08 09:00 |  | 0d |  | start no earlier than 2012-11-09 08:00 |  |  |
| 101 | 1.9.1.5 | 项目周例会 5 | 1h | 2016-12-08 08:00 | 2016-12-08 09:00 |  | 0d |  | start no earlier than 2012-11-16 08:00 |  |  |
| 102 | 1.9.1.6 | 项目周例会 6 | 1h | 2016-12-08 08:00 | 2016-12-08 09:00 |  | 0d |  | start no earlier than 2012-11-23 08:00 |  |  |
| 103 | 1.9.1.7 | 项目周例会 7 | 1h | 2016-12-08 08:00 | 2016-12-08 09:00 |  | 0d |  | start no earlier than 2012-11-30 08:00 |  |  |
| 104 | 1.9.1.8 | 项目周例会 8 | 1h | 2016-12-08 08:00 | 2016-12-08 09:00 |  | 0d |  | start no earlier than 2012-12-07 08:00 |  |  |
| 105 | 1.9.1.9 | 项目周例会 9 | 1h | 2016-12-08 08:00 | 2016-12-08 09:00 |  | 0d |  | start no earlier than 2012-12-14 08:00 |  |  |
| 106 | 1.9.1.10 | 项目周例会 10 | 1h | 2016-12-08 08:00 | 2016-12-08 09:00 |  | 0d |  | start no earlier than 2012-12-21 08:00 |  |  |
| 107 | 1.9.1.11 | 项目周例会 11 | 1h | 2016-12-08 08:00 | 2016-12-08 09:00 |  | 0d |  | start no earlier than 2012-12-28 08:00 |  |  |
| 108 | 1.9.1.12 | 项目周例会 12 | 1h | 2016-12-08 08:00 | 2016-12-08 09:00 |  | 0d |  | start no earlier than 2013-01-04 08:00 |  |  |
| 109 | 1.9.1.13 | 项目周例会 13 | 1h | 2016-12-08 08:00 | 2016-12-08 09:00 |  | 0d |  | start no earlier than 2013-01-11 08:00 |  |  |
| 110 | 1.9.1.14 | 项目周例会 14 | 1h | 2016-12-08 08:00 | 2016-12-08 09:00 |  | 0d |  | start no earlier than 2013-01-18 08:00 |  |  |
| 111 | 1.9.1.15 | 项目周例会 15 | 1h | 2016-12-08 08:00 | 2016-12-08 09:00 |  | 0d |  | start no earlier than 2013-01-25 08:00 |  |  |
| 112 | 1.9.1.16 | 项目周例会 16 | 1h | 2016-12-08 08:00 | 2016-12-08 09:00 |  | 0d |  | start no earlier than 2013-02-01 08:00 |  |  |
| 113 | 1.9.1.17 | 项目周例会 17 | 1h | 2016-12-08 08:00 | 2016-12-08 09:00 |  | 0d |  | start no earlier than 2013-02-22 08:00 |  |  |
| 114 | 1.9.1.18 | 项目周例会 18 | 1h | 2016-12-08 08:00 | 2016-12-08 09:00 |  | 0d |  | start no earlier than 2013-03-01 08:00 |  |  |
| 115 | 1.9.1.19 | 项目周例会 19 | 1h | 2016-12-08 08:00 | 2016-12-08 09:00 |  | 0d |  | start no earlier than 2013-03-08 08:00 |  |  |
| 116 | 1.9.1.20 | 项目周例会 20 | 1h | 2016-12-08 08:00 | 2016-12-08 09:00 |  | 0d |  | start no earlier than 2013-03-15 08:00 |  |  |
| 117 | 1.9.1.21 | 项目周例会 21 | 1h | 2016-12-08 08:00 | 2016-12-08 09:00 |  | 0d |  | start no earlier than 2013-03-22 08:00 |  |  |
| 118 | 1.9.1.22 | 项目周例会 22 | 1h | 2016-12-08 08:00 | 2016-12-08 09:00 |  | 0d |  | start no earlier than 2013-03-29 08:00 |  |  |
| 119 | 1.9.1.23 | 项目周例会 23 | 1h | 2016-12-08 08:00 | 2016-12-08 09:00 |  | 0d |  | start no earlier than 2013-04-05 08:00 |  |  |
| 120 | 1.9.1.24 | 项目周例会 24 | 1h | 2016-12-08 08:00 | 2016-12-08 09:00 |  | 0d |  | start no earlier than 2013-04-12 08:00 |  |  |
| 121 | 1.9.1.25 | 项目周例会 25 | 1h | 2016-12-08 08:00 | 2016-12-08 09:00 |  | 0d |  | start no earlier than 2013-04-19 08:00 |  |  |
| 122 | 1.9.1.26 | 项目周例会 26 | 1h | 2016-12-08 08:00 | 2016-12-08 09:00 |  | 0d |  | start no earlier than 2013-04-26 08:00 |  |  |
| 123 | 1.9.1.27 | 项目周例会 27 | 1h | 2016-12-08 08:00 | 2016-12-08 09:00 |  | 0d |  | start no earlier than 2013-05-03 08:00 |  |  |
| 124 | 1.9.1.28 | 项目周例会 28 | 1h | 2016-12-08 08:00 | 2016-12-08 09:00 |  | 0d |  | start no earlier than 2013-05-10 08:00 |  |  |
| 125 | 1.9.1.29 | 项目周例会 29 | 1h | 2016-12-08 08:00 | 2016-12-08 09:00 |  | 0d |  | start no earlier than 2013-05-17 08:00 |  |  |
| 126 | 1.9.1.30 | 项目周例会 30 | 1h | 2016-12-08 08:00 | 2016-12-08 09:00 |  | 0d |  | start no earlier than 2013-05-24 08:00 |  |  |
| 127 | 1.9.1.31 | 项目周例会 31 | 1h | 2016-12-08 08:00 | 2016-12-08 09:00 |  | 0d |  | start no earlier than 2013-05-31 08:00 |  |  |

| ID | WBS | Task | Duration | Start | Finish | Total slack | Constraint |
| --- | --- | --- | --- | --- | --- | --- | --- |
| 128 | 1.9.2 | **项目周报编写** | 0.12d | 2016-12-08 08:00 | 2016-12-08 09:00 | 0d |  |
| 129 | 1.9.2.1 | 项目周报编写 1 | 1h | 2016-12-08 08:00 | 2016-12-08 09:00 | 0d | start no earlier than 2012-10-19 08:00 |
| 130 | 1.9.2.2 | 项目周报编写 2 | 1h | 2016-12-08 08:00 | 2016-12-08 09:00 | 0d | start no earlier than 2012-10-26 08:00 |
| 131 | 1.9.2.3 | 项目周报编写 3 | 1h | 2016-12-08 08:00 | 2016-12-08 09:00 | 0d | start no earlier than 2012-11-02 08:00 |
| 132 | 1.9.2.4 | 项目周报编写 4 | 1h | 2016-12-08 08:00 | 2016-12-08 09:00 | 0d | start no earlier than 2012-11-09 08:00 |
| 133 | 1.9.2.5 | 项目周报编写 5 | 1h | 2016-12-08 08:00 | 2016-12-08 09:00 | 0d | start no earlier than 2012-11-16 08:00 |
| 134 | 1.9.2.6 | 项目周报编写 6 | 1h | 2016-12-08 08:00 | 2016-12-08 09:00 | 0d | start no earlier than 2012-11-23 08:00 |
| 135 | 1.9.2.7 | 项目周报编写 7 | 1h | 2016-12-08 08:00 | 2016-12-08 09:00 | 0d | start no earlier than 2012-11-30 08:00 |
| 136 | 1.9.2.8 | 项目周报编写 8 | 1h | 2016-12-08 08:00 | 2016-12-08 09:00 | 0d | start no earlier than 2012-12-07 08:00 |
| 137 | 1.9.2.9 | 项目周报编写 9 | 1h | 2016-12-08 08:00 | 2016-12-08 09:00 | 0d | start no earlier than 2012-12-14 08:00 |
| 138 | 1.9.2.10 | 项目周报编写 10 | 1h | 2016-12-08 08:00 | 2016-12-08 09:00 | 0d | start no earlier than 2012-12-21 08:00 |
| 139 | 1.9.2.11 | 项目周报编写 11 | 1h | 2016-12-08 08:00 | 2016-12-08 09:00 | 0d | start no earlier than 2012-12-28 08:00 |
| 140 | 1.9.2.12 | 项目周报编写 12 | 1h | 2016-12-08 08:00 | 2016-12-08 09:00 | 0d | start no earlier than 2013-01-04 08:00 |
| 141 | 1.9.2.13 | 项目周报编写 13 | 1h | 2016-12-08 08:00 | 2016-12-08 09:00 | 0d | start no earlier than 2013-01-11 08:00 |
| 142 | 1.9.2.14 | 项目周报编写 14 | 1h | 2016-12-08 08:00 | 2016-12-08 09:00 | 0d | start no earlier than 2013-01-18 08:00 |
| 143 | 1.9.2.15 | 项目周报编写 15 | 1h | 2016-12-08 08:00 | 2016-12-08 09:00 | 0d | start no earlier than 2013-01-25 08:00 |
| 144 | 1.9.2.16 | 项目周报编写 16 | 1h | 2016-12-08 08:00 | 2016-12-08 09:00 | 0d | start no earlier than 2013-02-01 08:00 |
| 145 | 1.9.2.17 | 项目周报编写 17 | 1h | 2016-12-08 08:00 | 2016-12-08 09:00 | 0d | start no earlier than 2013-02-22 08:00 |
| 146 | 1.9.2.18 | 项目周报编写 18 | 1h | 2016-12-08 08:00 | 2016-12-08 09:00 | 0d | start no earlier than 2013-03-01 08:00 |
| 147 | 1.9.2.19 | 项目周报编写 19 | 1h | 2016-12-08 08:00 | 2016-12-08 09:00 | 0d | start no earlier than 2013-03-08 08:00 |
| 148 | 1.9.2.20 | 项目周报编写 20 | 1h | 2016-12-08 08:00 | 2016-12-08 09:00 | 0d | start no earlier than 2013-03-15 08:00 |
| 149 | 1.9.2.21 | 项目周报编写 21 | 1h | 2016-12-08 08:00 | 2016-12-08 09:00 | 0d | start no earlier than 2013-03-22 08:00 |
| 150 | 1.9.2.22 | 项目周报编写 22 | 1h | 2016-12-08 08:00 | 2016-12-08 09:00 | 0d | start no earlier than 2013-03-29 08:00 |
| 151 | 1.9.2.23 | 项目周报编写 23 | 1h | 2016-12-08 08:00 | 2016-12-08 09:00 | 0d | start no earlier than 2013-04-05 08:00 |
| 152 | 1.9.2.24 | 项目周报编写 24 | 1h | 2016-12-08 08:00 | 2016-12-08 09:00 | 0d | start no earlier than 2013-04-12 08:00 |
| 153 | 1.9.2.25 | 项目周报编写 25 | 1h | 2016-12-08 08:00 | 2016-12-08 09:00 | 0d | start no earlier than 2013-04-19 08:00 |
| 154 | 1.9.2.26 | 项目周报编写 26 | 1h | 2016-12-08 08:00 | 2016-12-08 09:00 | 0d | start no earlier than 2013-04-26 08:00 |
| 155 | 1.9.2.27 | 项目周报编写 27 | 1h | 2016-12-08 08:00 | 2016-12-08 09:00 | 0d | start no earlier than 2013-05-03 08:00 |
| 156 | 1.9.2.28 | 项目周报编写 28 | 1h | 2016-12-08 08:00 | 2016-12-08 09:00 | 0d | start no earlier than 2013-05-10 08:00 |
| 157 | 1.9.2.29 | 项目周报编写 29 | 1h | 2016-12-08 08:00 | 2016-12-08 09:00 | 0d | start no earlier than 2013-05-17 08:00 |
| 158 | 1.9.2.30 | 项目周报编写 30 | 1h | 2016-12-08 08:00 | 2016-12-08 09:00 | 0d | start no earlier than 2013-05-24 08:00 |
| 159 | 1.9.2.31 | 项目周报编写 31 | 1h | 2016-12-08 08:00 | 2016-12-08 09:00 | 0d | start no earlier than 2013-05-31 08:00 |

| ID | WBS | Task | Duration | Start | Finish | Total slack | Constraint |
| --- | --- | --- | --- | --- | --- | --- | --- |
| 160 | 1.10 | **风险管理** | 35d | 2016-12-08 08:00 | 2017-01-25 17:00 | 0d |  |
| 161 | 1.10.1 | 风险管理 1 | 1h | 2016-12-08 08:00 | 2016-12-08 09:00 | 0d | start no earlier than 2012-10-19 08:00 |
| 162 | 1.10.2 | 风险管理 2 | 1h | 2016-12-08 08:00 | 2016-12-08 09:00 | 0d | start no earlier than 2012-10-26 08:00 |
| 163 | 1.10.3 | 风险管理 3 | 1h | 2016-12-08 08:00 | 2016-12-08 09:00 | 0d | start no earlier than 2012-11-02 08:00 |
| 164 | 1.10.4 | 风险管理 4 | 1h | 2016-12-08 08:00 | 2016-12-08 09:00 | 0d | start no earlier than 2012-11-09 08:00 |
| 165 | 1.10.5 | 风险管理 5 | 1h | 2016-12-08 08:00 | 2016-12-08 09:00 | 0d | start no earlier than 2012-11-16 08:00 |
| 166 | 1.10.6 | 风险管理 6 | 1h | 2016-12-08 08:00 | 2016-12-08 09:00 | 0d | start no earlier than 2012-11-23 08:00 |
| 167 | 1.10.7 | 风险管理 7 | 1h | 2016-12-08 08:00 | 2016-12-08 09:00 | 0d | start no earlier than 2012-11-30 08:00 |
| 168 | 1.10.8 | 风险管理 8 | 1h | 2016-12-08 08:00 | 2016-12-08 09:00 | 0d | start no earlier than 2012-12-07 08:00 |
| 169 | 1.10.9 | 风险管理 9 | 1h | 2016-12-08 08:00 | 2016-12-08 09:00 | 0d | start no earlier than 2012-12-14 08:00 |
| 170 | 1.10.10 | 风险管理 10 | 1h | 2016-12-08 08:00 | 2016-12-08 09:00 | 0d | start no earlier than 2012-12-21 08:00 |
| 171 | 1.10.11 | 风险管理 11 | 1h | 2016-12-08 08:00 | 2016-12-08 09:00 | 0d | start no earlier than 2012-12-28 08:00 |
| 172 | 1.10.12 | 风险管理 12 | 1h | 2016-12-08 08:00 | 2016-12-08 09:00 | 0d | start no earlier than 2013-01-04 08:00 |
| 173 | 1.10.13 | 风险管理 13 | 1h | 2016-12-08 08:00 | 2016-12-08 09:00 | 0d | start no earlier than 2013-01-11 08:00 |
| 174 | 1.10.14 | 风险管理 14 | 1h | 2016-12-08 08:00 | 2016-12-08 09:00 | 0d | start no earlier than 2013-01-18 08:00 |
| 175 | 1.10.15 | 风险管理 15 | 1h | 2016-12-08 08:00 | 2016-12-08 09:00 | 0d | start no earlier than 2013-01-25 08:00 |
| 176 | 1.10.16 | 风险管理 16 | 1h | 2016-12-08 08:00 | 2016-12-08 09:00 | 0d | start no earlier than 2013-02-01 08:00 |
| 177 | 1.10.17 | 风险管理 17 | 1h | 2016-12-08 08:00 | 2016-12-08 09:00 | 0d | start no earlier than 2013-02-22 08:00 |
| 178 | 1.10.18 | 风险管理 18 | 1h | 2016-12-08 08:00 | 2016-12-08 09:00 | 0d | start no earlier than 2013-03-01 08:00 |
| 179 | 1.10.19 | 风险管理 19 | 1h | 2016-12-08 08:00 | 2016-12-08 09:00 | 0d | start no earlier than 2013-03-08 08:00 |
| 180 | 1.10.20 | 风险管理 20 | 1h | 2016-12-08 08:00 | 2016-12-08 09:00 | 0d | start no earlier than 2013-03-15 08:00 |
| 181 | 1.10.21 | 风险管理 21 | 1h | 2016-12-08 08:00 | 2016-12-08 09:00 | 0d | start no earlier than 2013-03-22 08:00 |
| 182 | 1.10.22 | 风险管理 22 | 1h | 2016-12-08 08:00 | 2016-12-08 09:00 | 0d | start no earlier than 2013-03-29 08:00 |
| 183 | 1.10.23 | 风险管理 23 | 1h | 2016-12-08 08:00 | 2016-12-08 09:00 | 0d | start no earlier than 2013-04-05 08:00 |
| 184 | 1.10.24 | 风险管理 24 | 1h | 2016-12-08 08:00 | 2016-12-08 09:00 | 0d | start no earlier than 2013-04-12 08:00 |
| 185 | 1.10.25 | 风险管理 25 | 1h | 2016-12-08 08:00 | 2016-12-08 09:00 | 0d | start no earlier than 2013-04-19 08:00 |
| 186 | 1.10.26 | 风险管理 26 | 1h | 2016-12-08 08:00 | 2016-12-08 09:00 | 0d | start no earlier than 2013-04-26 08:00 |
| 187 | 1.10.27 | 风险管理 27 | 1h | 2016-12-08 08:00 | 2016-12-08 09:00 | 0d | start no earlier than 2013-05-03 08:00 |
| 188 | 1.10.28 | 风险管理 28 | 1h | 2016-12-08 08:00 | 2016-12-08 09:00 | 0d | start no earlier than 2013-05-10 08:00 |
| 189 | 1.10.29 | 风险管理 29 | 1h | 2016-12-08 08:00 | 2016-12-08 09:00 | 0d | start no earlier than 2013-05-17 08:00 |
| 190 | 1.10.30 | 风险管理 30 | 1h | 2016-12-08 08:00 | 2016-12-08 09:00 | 0d | start no earlier than 2013-05-24 08:00 |
| 191 | 1.10.31 | 风险管理 31 | 1h | 2017-01-25 16:00 | 2017-01-25 17:00 | 0d | finish no earlier than 2017-01-25 17:00 |
